Schedule from MS Project XML, 2022-10-24 to 2022-12-12.

## Calendars

- Standard: Mon-Fri 08:00-12:00, 13:00-17:00; Sat-Sun off.

## Schedule

| ID | WBS | Task | Type | Duration | Start | Finish | Predecessors | Complete | Number1 | Text20 |
| --- | --- | --- | --- | --- | --- | --- | --- | --- | --- | --- |
| 1 | 1 | **PROGRAMA OBRA EDIFICIO ARBOLEDA CHILLAN** |  | 36d | 2022-10-24 | 2022-12-12 |  | 20% | 20.45 |  |
| 2 | 1.1 | **EDIFICIO ARBOLEDA CHILLAN DIAS HABILES** |  | 36d | 2022-10-24 | 2022-12-12 |  | 20% | 20.45 | 18,57 |
| 3 | 1.1.1 | **EDIFICIO ARBOLEDA CHILLAN DIAS CORRIDOS** |  | 36d | 2022-10-24 | 2022-12-12 |  | 20% | 20.45 | 18,57 |
| 4 | 1.1.1.1 | Reinicio del Programa | manual | 1d | 2022-10-24 | 2022-10-24 |  |  |  | 100 |
| 5 | 1.1.1.2 | **EDIFICACION** |  | 36d | 2022-10-24 | 2022-12-12 |  | 20% | 20.5 | 18,35 |
| 6 | 1.1.1.2.1 | **TERMINACIONES** |  | 36d | 2022-10-24 | 2022-12-12 |  | 20% | 20.5 | 18,35 |
| 7 | 1.1.1.2.1.1 | **Pilotos** |  | 36d | 2022-10-24 | 2022-12-12 |  | 20% | 20.5 | 18,35 |
| 8 | 1.1.1.2.1.1.1 | **Departamento 205** |  | 24d | 2022-10-24 | 2022-11-24 |  | 27% | 27.91 | 41,86 |
| 9 | 1.1.1.2.1.1.1.1 | **Fase 3** |  | 22d | 2022-10-24 | 2022-11-22 |  | 46% | 46.94 | 57,15 |
| 10 | 1.1.1.2.1.1.1.1.1 | Maquillaje Terrazas (Antepechos,Cielos, Muros sin Eifs, Cielos) | manual | 3d | 2022-10-24 | 2022-10-26 | 4SS | 100% | 100 | 100 |
| 11 | 1.1.1.2.1.1.1.1.2 | Remate Ventanas | manual | 2d | 2022-10-24 | 2022-10-25 | 10SS | 100% | 100 | 100 |
| 12 | 1.1.1.2.1.1.1.1.3 | Barandas Vidriadas instalacion Banquina Aluminio | manual | 3d | 2022-11-15 | 2022-11-17 | 27 |  |  |  |
| 13 | 1.1.1.2.1.1.1.1.4 | Barandas Vidriadas Instalacion Cristal | manual | 3d | 2022-11-18 | 2022-11-22 | 12 |  |  |  |
| 14 | 1.1.1.2.1.1.1.1.5 | Cortagoteras terrazas | manual | 3d | 2022-10-27 | 2022-10-31 | 10 |  |  | 100 |
| 15 | 1.1.1.2.1.1.1.1.6 | Canteria Baños | manual | 5d | 2022-11-01 | 2022-11-07 | 17 | 100% | 100 | 60 |
| 16 | 1.1.1.2.1.1.1.1.7 | Ceramica piso | manual | 2d | 2022-10-24 | 2022-10-25 | 11SS | 100% | 100 | 100 |
| 17 | 1.1.1.2.1.1.1.1.8 | Ceramica Muro (Baño) | manual | 3d | 2022-10-27 | 2022-10-31 | 30 | 80% | 80 | 100 |
| 18 | 1.1.1.2.1.1.1.1.9 | Ceramica Muro (Cocina) | manual | 1d | 2022-11-03 | 2022-11-03 | 34 |  |  | 100 |
| 19 | 1.1.1.2.1.1.1.1.10 | Cornisas | manual | 2d | 2022-10-26 | 2022-10-27 | 11 | 90% | 90 | 100 |
| 20 | 1.1.1.2.1.1.1.1.11 | Empastes | manual | 4d | 2022-10-28 | 2022-11-02 | 19 | 50% | 50 | 100 |
| 21 | 1.1.1.2.1.1.1.1.12 | Cielo Deptos (Revisar Terminacion) | manual | 5d | 2022-11-03 | 2022-11-09 | 20 | 80% | 80 | 20 |
| 22 | 1.1.1.2.1.1.1.1.13 | Cielo Baños | manual | 1d | 2022-11-08 | 2022-11-08 | 15 | 80% | 80 |  |
| 23 | 1.1.1.2.1.1.1.1.14 | Fondo Closet | manual | 3d | 2022-11-03 | 2022-11-07 | 20 |  |  | 33,33 |
| 24 | 1.1.1.2.1.1.1.1.15 | Pintura (Puertas Y Muros S/Rev) | manual | 3d | 2022-11-10 | 2022-11-14 | 21 |  |  |  |
| 25 | 1.1.1.2.1.1.1.1.16 | Pintura (Cielo Terrazas) | manual | 3d | 2022-11-01 | 2022-11-03 | 14 |  |  | 100 |
| 26 | 1.1.1.2.1.1.1.1.17 | Calefon | manual | 1d | 2022-11-10 | 2022-11-10 | 21 |  |  |  |
| 27 | 1.1.1.2.1.1.1.1.18 | Gabinete Calefon | manual | 2d | 2022-11-11 | 2022-11-14 | 26 |  |  |  |

| ID | WBS | Task | Type | Duration | Start | Finish | Predecessors | Complete | Text20 | Number1 |
| --- | --- | --- | --- | --- | --- | --- | --- | --- | --- | --- |
| 28 | 1.1.1.2.1.1.1.2 | **Fase 4** |  | 22d | 2022-10-26 | 2022-11-24 |  | 2% | 21,62 | 2.7 |
| 29 | 1.1.1.2.1.1.1.2.1 | Wc | manual | 1d | 2022-11-01 | 2022-11-01 | 17 |  | 100 |  |
| 30 | 1.1.1.2.1.1.1.2.2 | Receptaculo | manual | 1d | 2022-10-26 | 2022-10-26 | 16 | 100% | 100 | 100 |
| 31 | 1.1.1.2.1.1.1.2.3 | Muebles de Baño | manual | 1d | 2022-11-09 | 2022-11-09 | 22 |  |  |  |
| 32 | 1.1.1.2.1.1.1.2.4 | Espejos | manual | 2d | 2022-11-10 | 2022-11-11 | 31 |  |  |  |
| 33 | 1.1.1.2.1.1.1.2.5 | Muebles de Cocina | manual | 4d | 2022-10-26 | 2022-10-31 | 16 |  | 100 |  |
| 34 | 1.1.1.2.1.1.1.2.6 | Instalacion Cubierta mueble cocina | manual | 2d | 2022-11-01 | 2022-11-02 | 33 |  | 100 |  |
| 35 | 1.1.1.2.1.1.1.2.7 | Closet Estructura Interior (Repisas Cajones) | manual | 3d | 2022-11-08 | 2022-11-10 | 23 |  |  |  |
| 36 | 1.1.1.2.1.1.1.2.8 | Closets Puertas | manual | 2d | 2022-11-15 | 2022-11-16 | 41 |  |  |  |
| 37 | 1.1.1.2.1.1.1.2.9 | Quincalleria | manual | 2d | 2022-11-15 | 2022-11-16 | 24 |  |  |  |
| 38 | 1.1.1.2.1.1.1.2.10 | Manpara de Baño | manual | 2d | 2022-11-09 | 2022-11-10 | 22 |  |  |  |
| 39 | 1.1.1.2.1.1.1.2.11 | Accesorios Baños | manual | 1d | 2022-11-11 | 2022-11-11 | 38 |  |  |  |
| 40 | 1.1.1.2.1.1.1.2.12 | Griferia | manual | 3d | 2022-11-10 | 2022-11-14 | 31 |  |  |  |
| 41 | 1.1.1.2.1.1.1.2.13 | Piso Vinilico | manual | 3d | 2022-11-10 | 2022-11-14 | 21 |  |  |  |
| 42 | 1.1.1.2.1.1.1.2.14 | Guardapolvos | manual | 2d | 2022-11-15 | 2022-11-16 | 41 |  |  |  |
| 43 | 1.1.1.2.1.1.1.2.15 | Sello Papel Mural | manual | 2d | 2022-11-15 | 2022-11-16 | 24 |  |  |  |
| 44 | 1.1.1.2.1.1.1.2.16 | Papel Mural | manual | 2d | 2022-11-17 | 2022-11-18 | 43 |  |  |  |
| 45 | 1.1.1.2.1.1.1.2.17 | Equipamiento de Cocina (Horno, Campana y Ecimera) | manual | 2d | 2022-11-21 | 2022-11-22 | 44 |  |  |  |
| 46 | 1.1.1.2.1.1.1.2.18 | Aseo | manual | 1d | 2022-11-23 | 2022-11-23 | 45 |  |  |  |
| 47 | 1.1.1.2.1.1.1.2.19 | R1 | manual | 1d | 2022-11-24 | 2022-11-24 | 46 |  |  |  |
| 48 | 1.1.1.2.1.1.2 | **Departamento 206** |  | 23d | 2022-10-27 | 2022-11-28 |  | 19% | 29,76 | 19.52 |
| 49 | 1.1.1.2.1.1.2.1 | **Fase 3** |  | 15d | 2022-10-27 | 2022-11-16 |  | 30% |  | 30.21 |
| 50 | 1.1.1.2.1.1.2.1.1 | Maquillaje Terrazas (Antepechos,Cielos, Muros sin Eifs, Cielos) | manual | 3d | 2022-10-27 | 2022-10-31 | 10 | 100% |  | 100 |
| 51 | 1.1.1.2.1.1.2.1.2 | Remate Ventanas | manual | 2d | 2022-10-27 | 2022-10-28 | 50SS | 100% |  | 100 |
| 52 | 1.1.1.2.1.1.2.1.3 | Barandas Vidriadas instalacion Banquina Aluminio | manual | 3d | 2022-11-09 | 2022-11-11 | 65 |  |  |  |
| 53 | 1.1.1.2.1.1.2.1.4 | Barandas Vidriadas Instalacion Cristal | manual | 3d | 2022-11-14 | 2022-11-16 | 52 |  |  |  |
| 54 | 1.1.1.2.1.1.2.1.5 | Cortagoteras terrazas | manual | 3d | 2022-11-01 | 2022-11-03 | 50 |  |  |  |
| 55 | 1.1.1.2.1.1.2.1.6 | Canteria Baños | manual | 5d | 2022-11-04 | 2022-11-10 | 57 |  |  |  |
| 56 | 1.1.1.2.1.1.2.1.7 | Ceramica piso | manual | 2d | 2022-10-27 | 2022-10-28 | 51SS | 80% |  | 80 |
| 57 | 1.1.1.2.1.1.2.1.8 | Ceramica Muro (Baño) | manual | 3d | 2022-11-01 | 2022-11-03 | 69 | 90% |  | 90 |
| 58 | 1.1.1.2.1.1.2.1.9 | Ceramica Muro (Cocina) | manual | 1d | 2022-11-08 | 2022-11-08 | 73 | 100% |  | 100 |
| 59 | 1.1.1.2.1.1.2.1.10 | Cornisas | manual | 2d | 2022-10-31 | 2022-11-01 | 51 | 70% |  | 70 |
| 60 | 1.1.1.2.1.1.2.1.11 | Empastes | manual | 4d | 2022-11-01 | 2022-11-04 | 59SS+1d | 50% |  | 50 |
| 61 | 1.1.1.2.1.1.2.1.12 | Cielo Deptos (Revisar Terminacion) | manual | 5d | 2022-11-07 | 2022-11-11 | 60 |  |  |  |
| 62 | 1.1.1.2.1.1.2.1.13 | Cielo Baños | manual | 1d | 2022-11-11 | 2022-11-11 | 55 | 50% |  | 50 |
| 63 | 1.1.1.2.1.1.2.1.14 | Fondo Closet | manual | 3d | 2022-11-07 | 2022-11-09 | 60 |  |  |  |
| 64 | 1.1.1.2.1.1.2.1.15 | Pintura (Puertas Y Muros S/Rev) | manual | 3d | 2022-11-14 | 2022-11-16 | 61 |  |  |  |
| 65 | 1.1.1.2.1.1.2.1.16 | Pintura (Cielo Terrazas) | manual | 3d | 2022-11-04 | 2022-11-08 | 54 |  |  |  |
| 66 | 1.1.1.2.1.1.2.1.17 | Calefon | manual | 1d | 2022-10-31 | 2022-10-31 | 56 |  |  |  |

| ID | WBS | Task | Type | Duration | Start | Finish | Predecessors | Complete | Number1 | Text20 |
| --- | --- | --- | --- | --- | --- | --- | --- | --- | --- | --- |
| 67 | 1.1.1.2.1.1.2.2 | **Fase 4** |  | 21d | 2022-10-31 | 2022-11-28 |  | 5% | 5.94 |  |
| 68 | 1.1.1.2.1.1.2.2.1 | Wc | manual | 1d | 2022-10-31 | 2022-10-31 | 56 |  |  |  |
| 69 | 1.1.1.2.1.1.2.2.2 | Receptaculo | manual | 1d | 2022-10-31 | 2022-10-31 | 56 | 100% | 100 |  |
| 70 | 1.1.1.2.1.1.2.2.3 | Muebles de Baño | manual | 1d | 2022-11-14 | 2022-11-14 | 62 |  |  |  |
| 71 | 1.1.1.2.1.1.2.2.4 | Espejos | manual | 2d | 2022-11-15 | 2022-11-16 | 70 |  |  |  |
| 72 | 1.1.1.2.1.1.2.2.5 | Muebles de Cocina | manual | 4d | 2022-10-31 | 2022-11-03 | 56 |  |  |  |
| 73 | 1.1.1.2.1.1.2.2.6 | Instalacion Cubierta mueble cocina | manual | 2d | 2022-11-04 | 2022-11-07 | 72 |  |  |  |
| 74 | 1.1.1.2.1.1.2.2.7 | Closet Estructura Interior (Repisas Cajones) | manual | 3d | 2022-11-10 | 2022-11-14 | 63 |  |  |  |
| 75 | 1.1.1.2.1.1.2.2.8 | Closets Puertas | manual | 2d | 2022-11-17 | 2022-11-18 | 80 |  |  |  |
| 76 | 1.1.1.2.1.1.2.2.9 | Quincalleria | manual | 2d | 2022-11-17 | 2022-11-18 | 64 |  |  |  |
| 77 | 1.1.1.2.1.1.2.2.10 | Manpara de Baño | manual | 2d | 2022-11-14 | 2022-11-15 | 62 |  |  |  |
| 78 | 1.1.1.2.1.1.2.2.11 | Accesorios Baños | manual | 1d | 2022-11-16 | 2022-11-16 | 77 |  |  |  |
| 79 | 1.1.1.2.1.1.2.2.12 | Griferia | manual | 3d | 2022-11-15 | 2022-11-17 | 70 |  |  |  |
| 80 | 1.1.1.2.1.1.2.2.13 | Piso Vinilico | manual | 3d | 2022-11-14 | 2022-11-16 | 61 |  |  |  |
| 81 | 1.1.1.2.1.1.2.2.14 | Guardapolvos | manual | 2d | 2022-11-17 | 2022-11-18 | 80 |  |  |  |
| 82 | 1.1.1.2.1.1.2.2.15 | Sello Papel Mural | manual | 2d | 2022-11-21 | 2022-11-22 | 81 |  |  |  |
| 83 | 1.1.1.2.1.1.2.2.16 | Papel Mural | manual | 2d | 2022-11-23 | 2022-11-24 | 82 | 60% | 60 |  |
| 84 | 1.1.1.2.1.1.2.2.17 | Equipamiento de Cocina (Horno, Campana y Ecimera) | manual | 2d | 2022-11-04 | 2022-11-07 | 72 |  |  |  |
| 85 | 1.1.1.2.1.1.2.2.18 | Aseo | manual | 1d | 2022-11-25 | 2022-11-25 | 83 |  |  |  |
| 86 | 1.1.1.2.1.1.2.2.19 | R1 | manual | 1d | 2022-11-28 | 2022-11-28 | 85 |  |  |  |
| 87 | 1.1.1.2.1.1.3 | **Departamento 207** |  | 24d | 2022-11-01 | 2022-12-02 |  | 22% | 22.09 | 8,14 |
| 88 | 1.1.1.2.1.1.3.1 | **Fase 3** |  | 18d | 2022-11-01 | 2022-11-24 |  | 36% | 36.74 |  |
| 89 | 1.1.1.2.1.1.3.1.1 | Maquillaje Terrazas (Antepechos,Cielos, Muros sin Eifs, Cielos) | manual | 3d | 2022-11-01 | 2022-11-03 | 50 | 100% | 100 |  |
| 90 | 1.1.1.2.1.1.3.1.2 | Remate Ventanas | manual | 2d | 2022-11-01 | 2022-11-02 | 89SS | 100% | 100 |  |
| 91 | 1.1.1.2.1.1.3.1.3 | Barandas Vidriadas instalacion Banquina Aluminio | manual | 3d | 2022-11-17 | 2022-11-21 | 106 |  |  |  |
| 92 | 1.1.1.2.1.1.3.1.4 | Barandas Vidriadas Instalacion Cristal | manual | 3d | 2022-11-22 | 2022-11-24 | 91 |  |  |  |
| 93 | 1.1.1.2.1.1.3.1.5 | Cortagoteras terrazas | manual | 3d | 2022-11-04 | 2022-11-08 | 89 |  |  |  |
| 94 | 1.1.1.2.1.1.3.1.6 | Canteria Baños | manual | 5d | 2022-11-11 | 2022-11-17 | 96 | 100% | 100 |  |
| 95 | 1.1.1.2.1.1.3.1.7 | Ceramica piso | manual | 2d | 2022-11-03 | 2022-11-04 | 90 | 100% | 100 |  |
| 96 | 1.1.1.2.1.1.3.1.8 | Ceramica Muro (Baño) | manual | 3d | 2022-11-08 | 2022-11-10 | 109 | 80% | 80 |  |
| 97 | 1.1.1.2.1.1.3.1.9 | Ceramica Muro (Cocina) | manual | 1d | 2022-11-11 | 2022-11-11 | 112 |  |  |  |
| 98 | 1.1.1.2.1.1.3.1.10 | Cornisas | manual | 2d | 2022-11-03 | 2022-11-04 | 90 | 60% | 60 |  |
| 99 | 1.1.1.2.1.1.3.1.11 | Empastes | manual | 4d | 2022-11-07 | 2022-11-10 | 98 | 60% | 60 |  |
| 100 | 1.1.1.2.1.1.3.1.12 | Cielo Deptos (Revisar Terminacion) | manual | 5d | 2022-11-11 | 2022-11-17 | 99 |  |  |  |
| 101 | 1.1.1.2.1.1.3.1.13 | Cielo Baños | manual | 1d | 2022-11-18 | 2022-11-18 | 94 |  |  |  |
| 102 | 1.1.1.2.1.1.3.1.14 | Fondo Closet | manual | 3d | 2022-11-11 | 2022-11-15 | 99 |  |  |  |
| 103 | 1.1.1.2.1.1.3.1.15 | Pintura (Puertas Y Muros S/Rev) | manual | 3d | 2022-11-18 | 2022-11-22 | 100 |  |  |  |
| 104 | 1.1.1.2.1.1.3.1.16 | Pintura (Cielo Terrazas) | manual | 3d | 2022-11-09 | 2022-11-11 | 93 |  |  |  |
| 105 | 1.1.1.2.1.1.3.1.17 | Calefon | manual | 1d | 2022-11-14 | 2022-11-14 | 104 |  |  |  |
| 106 | 1.1.1.2.1.1.3.1.18 | Gabinete Calefon | manual | 2d | 2022-11-15 | 2022-11-16 | 105 |  |  |  |

| ID | WBS | Task | Type | Duration | Start | Finish | Predecessors | Complete | Number1 |
| --- | --- | --- | --- | --- | --- | --- | --- | --- | --- |
| 107 | 1.1.1.2.1.1.3.2 | **Fase 4** |  | 20d | 2022-11-07 | 2022-12-02 |  | 2% | 2.7 |
| 108 | 1.1.1.2.1.1.3.2.1 | Wc | manual | 1d | 2022-11-07 | 2022-11-07 | 95 |  |  |
| 109 | 1.1.1.2.1.1.3.2.2 | Receptaculo | manual | 1d | 2022-11-07 | 2022-11-07 | 95 | 100% | 100 |
| 110 | 1.1.1.2.1.1.3.2.3 | Muebles de Baño | manual | 1d | 2022-11-21 | 2022-11-21 | 101 |  |  |
| 111 | 1.1.1.2.1.1.3.2.4 | Espejos | manual | 2d | 2022-11-22 | 2022-11-23 | 110 |  |  |
| 112 | 1.1.1.2.1.1.3.2.5 | Muebles de Cocina | manual | 4d | 2022-11-07 | 2022-11-10 | 95 |  |  |
| 113 | 1.1.1.2.1.1.3.2.6 | Instalacion Cubierta mueble cocina | manual | 2d | 2022-11-11 | 2022-11-14 | 112 |  |  |
| 114 | 1.1.1.2.1.1.3.2.7 | Closet Estructura Interior (Repisas Cajones) | manual | 3d | 2022-11-16 | 2022-11-18 | 102 |  |  |
| 115 | 1.1.1.2.1.1.3.2.8 | Closets Puertas | manual | 2d | 2022-11-23 | 2022-11-24 | 120 |  |  |
| 116 | 1.1.1.2.1.1.3.2.9 | Quincalleria | manual | 2d | 2022-11-23 | 2022-11-24 | 103 |  |  |
| 117 | 1.1.1.2.1.1.3.2.10 | Manpara de Baño | manual | 2d | 2022-11-21 | 2022-11-22 | 101 |  |  |
| 118 | 1.1.1.2.1.1.3.2.11 | Accesorios Baños | manual | 1d | 2022-11-23 | 2022-11-23 | 117 |  |  |
| 119 | 1.1.1.2.1.1.3.2.12 | Griferia | manual | 3d | 2022-11-22 | 2022-11-24 | 110 |  |  |
| 120 | 1.1.1.2.1.1.3.2.13 | Piso Vinilico | manual | 3d | 2022-11-18 | 2022-11-22 | 100 |  |  |
| 121 | 1.1.1.2.1.1.3.2.14 | Guardapolvos | manual | 2d | 2022-11-23 | 2022-11-24 | 120 |  |  |
| 122 | 1.1.1.2.1.1.3.2.15 | Sello Papel Mural | manual | 2d | 2022-11-25 | 2022-11-28 | 121 |  |  |
| 123 | 1.1.1.2.1.1.3.2.16 | Papel Mural | manual | 2d | 2022-11-29 | 2022-11-30 | 122 |  |  |
| 124 | 1.1.1.2.1.1.3.2.17 | Equipamiento de Cocina (Horno, Campana y Ecimera) | manual | 2d | 2022-11-11 | 2022-11-14 | 112 |  |  |
| 125 | 1.1.1.2.1.1.3.2.18 | Aseo | manual | 1d | 2022-12-01 | 2022-12-01 | 123 |  |  |
| 126 | 1.1.1.2.1.1.3.2.19 | R1 | manual | 1d | 2022-12-02 | 2022-12-02 | 125 |  |  |
| 127 | 1.1.1.2.1.1.4 | **Departamento 209** |  | 27d | 2022-11-04 | 2022-12-12 |  | 17% | 17.84 |
| 128 | 1.1.1.2.1.1.4.1 | **Fase 3** |  | 19d | 2022-11-04 | 2022-11-30 |  | 28% | 28.82 |
| 129 | 1.1.1.2.1.1.4.1.1 | Maquillaje Terrazas (Antepechos,Cielos, Muros sin Eifs, Cielos) | manual | 3d | 2022-11-04 | 2022-11-08 | 89 | 100% | 100 |
| 130 | 1.1.1.2.1.1.4.1.2 | Remate Ventanas | manual | 2d | 2022-11-09 | 2022-11-10 | 129 | 50% | 50 |
| 131 | 1.1.1.2.1.1.4.1.3 | Barandas Vidriadas instalacion Banquina Aluminio | manual | 3d | 2022-11-21 | 2022-11-23 | 147 |  |  |
| 132 | 1.1.1.2.1.1.4.1.4 | Barandas Vidriadas Instalacion Cristal | manual | 3d | 2022-11-24 | 2022-11-28 | 131 |  |  |
| 133 | 1.1.1.2.1.1.4.1.5 | Cortagoteras terrazas | manual | 3d | 2022-11-09 | 2022-11-11 | 129 |  |  |
| 134 | 1.1.1.2.1.1.4.1.6 | Canteria Baños | manual | 5d | 2022-11-21 | 2022-11-25 | 136 | 100% | 100 |
| 135 | 1.1.1.2.1.1.4.1.7 | Ceramica piso | manual | 2d | 2022-11-11 | 2022-11-14 | 130 | 100% | 100 |
| 136 | 1.1.1.2.1.1.4.1.8 | Ceramica Muro (Baño) | manual | 3d | 2022-11-16 | 2022-11-18 | 150 |  |  |
| 137 | 1.1.1.2.1.1.4.1.9 | CeramicaMuro (Cocina) | manual | 1d | 2022-11-23 | 2022-11-23 | 154 | 70% | 70 |
| 138 | 1.1.1.2.1.1.4.1.10 | Cornisas | manual | 2d | 2022-11-11 | 2022-11-14 | 130 | 50% | 50 |
| 139 | 1.1.1.2.1.1.4.1.11 | Empastes | manual | 4d | 2022-11-15 | 2022-11-18 | 138 | 50% | 50 |
| 140 | 1.1.1.2.1.1.4.1.12 | Cielo Deptos (Revisar Terminacion) | manual | 5d | 2022-11-21 | 2022-11-25 | 139 |  |  |
| 141 | 1.1.1.2.1.1.4.1.13 | Cielo Baños | manual | 1d | 2022-11-28 | 2022-11-28 | 134 |  |  |
| 142 | 1.1.1.2.1.1.4.1.14 | Cielo Terrazas (Inst. Perfil c/Gotera) | manual | 2d | 2022-11-09 | 2022-11-10 | 129 |  |  |
| 143 | 1.1.1.2.1.1.4.1.15 | Fondo Closet | manual | 3d | 2022-11-21 | 2022-11-23 | 139 |  |  |
| 144 | 1.1.1.2.1.1.4.1.16 | Pintura (Puertas Y Muros S/Rev) | manual | 3d | 2022-11-28 | 2022-11-30 | 140 |  |  |
| 145 | 1.1.1.2.1.1.4.1.17 | Pintura (Cielo Terrazas) | manual | 3d | 2022-11-11 | 2022-11-15 | 130 |  |  |
| 146 | 1.1.1.2.1.1.4.1.18 | Calefon | manual | 1d | 2022-11-16 | 2022-11-16 | 145 |  |  |
| 147 | 1.1.1.2.1.1.4.1.19 | Gabinete Calefon | manual | 2d | 2022-11-17 | 2022-11-18 | 146 |  |  |

| ID | WBS | Task | Type | Duration | Start | Finish | Predecessors | Complete | Number1 | Text20 |
| --- | --- | --- | --- | --- | --- | --- | --- | --- | --- | --- |
| 148 | 1.1.1.2.1.1.4.2 | **Fase 4** |  | 20d | 2022-11-15 | 2022-12-12 |  | 2% | 2.7 |  |
| 149 | 1.1.1.2.1.1.4.2.1 | Wc | manual | 1d | 2022-11-15 | 2022-11-15 | 135 |  |  |  |
| 150 | 1.1.1.2.1.1.4.2.2 | Receptaculo | manual | 1d | 2022-11-15 | 2022-11-15 | 135 | 100% | 100 |  |
| 151 | 1.1.1.2.1.1.4.2.3 | Muebles de Baño | manual | 1d | 2022-11-29 | 2022-11-29 | 141 |  |  |  |
| 152 | 1.1.1.2.1.1.4.2.4 | Espejos | manual | 2d | 2022-11-30 | 2022-12-01 | 151 |  |  |  |
| 153 | 1.1.1.2.1.1.4.2.5 | Muebles de Cocina | manual | 4d | 2022-11-15 | 2022-11-18 | 135 |  |  |  |
| 154 | 1.1.1.2.1.1.4.2.6 | Instalacion Cubierta mueble cocina | manual | 2d | 2022-11-21 | 2022-11-22 | 153 |  |  |  |
| 155 | 1.1.1.2.1.1.4.2.7 | Closet Estructura Interior (Repisas Cajones) | manual | 3d | 2022-11-24 | 2022-11-28 | 143 |  |  |  |
| 156 | 1.1.1.2.1.1.4.2.8 | Closets Puertas | manual | 2d | 2022-12-01 | 2022-12-02 | 161 |  |  |  |
| 157 | 1.1.1.2.1.1.4.2.9 | Quincalleria | manual | 2d | 2022-12-01 | 2022-12-02 | 144 |  |  |  |
| 158 | 1.1.1.2.1.1.4.2.10 | Manpara de Baño | manual | 2d | 2022-11-29 | 2022-11-30 | 141 |  |  |  |
| 159 | 1.1.1.2.1.1.4.2.11 | Accesorios Baños | manual | 1d | 2022-12-01 | 2022-12-01 | 158 |  |  |  |
| 160 | 1.1.1.2.1.1.4.2.12 | Griferia | manual | 3d | 2022-11-30 | 2022-12-02 | 151 |  |  |  |
| 161 | 1.1.1.2.1.1.4.2.13 | Piso Vinilico | manual | 3d | 2022-11-28 | 2022-11-30 | 140 |  |  |  |
| 162 | 1.1.1.2.1.1.4.2.14 | Guardapolvos | manual | 2d | 2022-12-01 | 2022-12-02 | 161 |  |  |  |
| 163 | 1.1.1.2.1.1.4.2.15 | Sello Papel Mural | manual | 2d | 2022-12-05 | 2022-12-06 | 162 |  |  |  |
| 164 | 1.1.1.2.1.1.4.2.16 | Papel Mural | manual | 2d | 2022-12-07 | 2022-12-08 | 163 |  |  |  |
| 165 | 1.1.1.2.1.1.4.2.17 | Equipamiento de Cocina (Horno, Campana y Ecimera) | manual | 2d | 2022-11-21 | 2022-11-22 | 153 |  |  |  |
| 166 | 1.1.1.2.1.1.4.2.18 | Aseo | manual | 1d | 2022-12-09 | 2022-12-09 | 164 |  |  |  |
| 167 | 1.1.1.2.1.1.4.2.19 | R1 | manual | 1d | 2022-12-12 | 2022-12-12 | 166 |  |  |  |
| 168 | 1.1.1.2.1.1.5 | **Lavanderia** |  | 28d | 2022-11-03 | 2022-12-12 |  | 6% | 6.25 | 3,13 |
| 169 | 1.1.1.2.1.1.5.1 | **Fase 3** |  | 15d | 2022-11-03 | 2022-11-23 |  | 11% | 11.77 |  |
| 170 | 1.1.1.2.1.1.5.1.1 | Marcos y Puertas Acceso | manual | 2d | 2022-11-07 | 2022-11-08 | 171 |  |  |  |
| 171 | 1.1.1.2.1.1.5.1.2 | Ventanas | manual | 2d | 2022-11-03 | 2022-11-04 | 10SS+8d | 100% | 100 |  |
| 172 | 1.1.1.2.1.1.5.1.3 | Remate Ventanas | manual | 2d | 2022-11-07 | 2022-11-08 | 171 |  |  |  |
| 173 | 1.1.1.2.1.1.5.1.4 | Cornisas | manual | 1d | 2022-11-09 | 2022-11-09 | 172 |  |  |  |
| 174 | 1.1.1.2.1.1.5.1.5 | Empastes | manual | 3d | 2022-11-10 | 2022-11-14 | 173 |  |  |  |
| 175 | 1.1.1.2.1.1.5.1.6 | Pintura Cielo | manual | 3d | 2022-11-15 | 2022-11-17 | 174 |  |  |  |
| 176 | 1.1.1.2.1.1.5.1.7 | Pintura | manual | 4d | 2022-11-18 | 2022-11-23 | 175 |  |  |  |

| ID | WBS | Task | Type | Duration | Start | Finish | Predecessors |
| --- | --- | --- | --- | --- | --- | --- | --- |
| 177 | 1.1.1.2.1.1.5.2 | **Fase 4** |  | 24d | 2022-11-09 | 2022-12-12 |  |
| 178 | 1.1.1.2.1.1.5.2.1 | Quincalleria | manual | 2d | 2022-11-09 | 2022-11-10 | 170 |
| 179 | 1.1.1.2.1.1.5.2.2 | Piso Porcenalanto | manual | 3d | 2022-11-24 | 2022-11-28 | 176 |
| 180 | 1.1.1.2.1.1.5.2.3 | Guardapolvos Ceramicos | manual | 2d | 2022-11-29 | 2022-11-30 | 179 |
| 181 | 1.1.1.2.1.1.5.2.4 | Revestimiento muro ladrillo negro | manual | 2d | 2022-12-01 | 2022-12-02 | 180 |
| 182 | 1.1.1.2.1.1.5.2.5 | Instalacion Espejos | manual | 2d | 2022-12-05 | 2022-12-06 | 181 |
| 183 | 1.1.1.2.1.1.5.2.6 | Equipamiento (Lavadoras- calefont) | manual | 2d | 2022-12-07 | 2022-12-08 | 182 |
| 184 | 1.1.1.2.1.1.5.2.7 | Aseo | manual | 1d | 2022-12-09 | 2022-12-09 | 183 |
| 185 | 1.1.1.2.1.1.5.2.8 | R1 | manual | 1d | 2022-12-12 | 2022-12-12 | 184 |
